# Зеленый дом

Schedule from ProjectLibre, 2026-01-01 to 2026-03-17.

## Calendars

- Пятидневка: Mon-Fri 08:00-12:00, 13:00-17:00; Sat-Sun off.

## Resources

| Resource | Rate | Notes |
| --- | --- | --- |
| Не назначено |  |  |
| PM | 5000 |  |
| Аналитик | 5000 |  |
| Дизайнер | 4000 |  |
| Верстальщик | 4500 |  |
| Web-разработчик | 7000 |  |
| Программист 1С | 6000 |  |
| Тестировщик | 3500 |  |
| Контент-менеджер | 3000 |  |
| Руководитель IT |  | согласно задаче 1 раздела 2 |
| Маркетолог |  |  |

## Schedule

| ID | Task | Duration | Start | Finish | Predecessors | Constraint | Resources |
| --- | --- | --- | --- | --- | --- | --- | --- |
| 1 | Анализ требований и разработка ТЗ | 5d | 2026-01-01 | 2026-01-07 |  |  | PM; Аналитик |
| 2 | Дизайн макетов интернет-магазина (5 страниц) | 7d | 2026-01-08 | 2026-01-16 | 1 |  | Дизайнер |
| 3 | Верстка HTML/CSS | 7d | 2026-01-19 | 2026-01-27 | 2 |  | Верстальщик |
| 4 | Ресурсный буфер для WEB-разработчика | 2d | 2026-01-17 | 2026-01-20 |  | start no earlier than 2026-01-17 |  |
| 5 | Программирование функционала интернет-магазина (каталог, корзина, личный кабинет, онлайн-оплата) | 10d | 2026-01-19 | 2026-01-30 | 2 |  | Web-разработчик |
| 6 | Интеграция с 1С | 7d | 2026-02-02 | 2026-02-10 | 5 |  | Программист 1С |
| 7 | Тестирование и отладка | 8d | 2026-02-11 | 2026-02-20 | 3, 6, 5 |  | Тестировщик |
| 8 | Наполнение контентом (200 товаров) | 10d | 2026-02-23 | 2026-03-06 | 7 |  | Контент-менеджер |
| 9 | Запуск и передача интернет-магазина | 2d | 2026-03-09 | 2026-03-10 | 7, 8 |  | PM |
| 10 | Проектный буфер | 5d | 2026-03-11 | 2026-03-17 | 9 |  |  |

Notes:
- 2: длительность/1,5
- 3: длительность/1,5
- 4: Резерв времени для подготовки Web-разработчика к началу программирования. Контролируется PM. Не является рабочей операцией и не увеличивает длительность критической цепи.
- 5: длительность/1,5
- 6: длительность/1,5
- 8: Продолжительность наполнения контентом сокращена с 15 до 10 рабочих дней за счёт организации параллельной работы нескольких исполнителей и использования заранее подготовленных шаблонов для загрузки информации о товарах.
- 10: введен в соответствии с условиями задания. не является рабочей операцией и не требует выделения ресурсов. предназначен для защиты в случае возникновения возможных задержек
